# 4746 hub

Schedule from a web Gantt chart, 2024-08-09 to 2024-09-30.
Saturdays and Sundays are off

## Schedule

| ID | WBS | Task | Duration | Start | Finish | Predecessors | Complete | inPeople | Status |
| --- | --- | --- | --- | --- | --- | --- | --- | --- | --- |
| 2 | 1 | 确认预扫问题 | 2d | 2024-08-09 | 2024-08-12 |  |  | 供应商 |  |
| 3 | 2 | 解决预扫问题，提交预扫通过结果 | 3d | 2024-08-13 | 2024-08-15 | 2 |  | 供应商 | waiting |
| 4 | 3 | ID确认配色方案 | 5d | 2024-08-12 | 2024-08-16 |  |  | ID | waiting |
| 5 | 4 | 开模 T0 样 | 12d | 2024-08-19 | 2024-09-03 | 4, 3 |  | 供应商 | waiting |
| 6 | 5 | PCBA贴片 T0 样 | 12d | 2024-08-16 | 2024-09-02 | 3 |  | 供应商 | waiting |
| 7 | 6 | 产前样质量验收测试 | 1d | 2024-09-04 | 2024-09-04 | 5, 6 | 3% | 质量 | waiting |
| 8 | 7 | 产前样签样 | 1d | 2024-09-05 | 2024-09-05 | 7 |  | 项目组 | waiting |
| 9 | 8 | 首批量产 | 15d | 2024-09-06 | 2024-09-26 | 8 |  | 供应商 | waiting |
| 10 | 9 | 渲染需求输出 | 2d | 2024-08-19 | 2024-08-20 | 4 |  | 产品 | waiting |
| 11 | 10 | 完成渲染图 | 5d | 2024-08-21 | 2024-08-27 | 10 |  | 渲染 | waiting |
| 12 | 11 | 包装设计 | 5d | 2024-08-28 | 2024-09-03 | 11 |  | 包装 | waiting |
| 13 | 12 | 包装打样 | 5d | 2024-09-04 | 2024-09-10 | 12 |  | 包装 | waiting |
| 14 | 13 | 包装测试 | 2d | 2024-09-11 | 2024-09-12 | 13 |  | 质量 | waiting |
| 15 | 14 | 包装生产 | 5d | 2024-09-13 | 2024-09-19 | 14 |  | 供应商、 | waiting |
| 16 | 15 | 成品入库 | 2d | 2024-09-27 | 2024-09-30 | 9, 15 |  | 项目 | waiting |
| 17 | 16 | 输出完全确定的BOM价格 | 1d | 2024-09-13 | 2024-09-13 | 3, 4, 14 |  | 供应商 | waiting |
| 18 | 17 | 输出中文文案 | 1d | 2024-08-19 | 2024-08-19 |  |  | 产品 |  |
| 19 | 18 | 翻译英文文案 | 3d | 2024-08-20 | 2024-08-22 | 18 |  | 市场 | waiting |
| 20 | 19 | 渲染图、中英文案录入中台 | 1d | 2024-09-16 | 2024-09-16 | 17, 18, 19, 11 |  | 市场 | waiting |
| 21 | 20 | 输出定价定量资料 | 1d | 2024-09-16 | 2024-09-16 | 17 |  | 产品 | waiting |
| 22 | 21 | 完成定价审批 | 1d | 2024-09-17 | 2024-09-17 | 21, 17 |  | 产品 | waiting |
| 23 | 22 | 销售区域认证费用确定 | 1d | 2024-08-09 | 2024-08-09 |  |  | 认证 |  |
| 24 | 23 | 卖点宣讲会 | 1d | 2024-09-17 | 2024-09-17 | 21 |  | 产品 | waiting |
| 25 | 24 | 确认销售区域MOQ | 1d | 2024-08-12 | 2024-08-12 | 23 |  | GTM | waiting |
| 26 | 25 | 确认销售区域，完成定量 | 1d | 2024-09-18 | 2024-09-18 | 24, 25 |  | 销售 | waiting |

Notes:
- 3: 验收预烧通过结果
- 4: 确认工程师，压住需求
